# D:\Developpements\DiamantExtreme\Document\Planification\Dx

Schedule from MS Project, 2003-05-12 to 2003-10-21, A marks actual dates.
Universite Sherbrooke

## Calendars

- Standard: Mon-Fri 08:00-12:00, 13:00-17:00; Sat-Sun off.

## Resources

| Resource |
| --- |
| Alex |
| Ruben |
| Yannick |

## Schedule

| ID | WBS | Task | Type | Duration | Start | Finish | Predecessors | Complete | Remaining | Baseline start | Baseline finish | Baseline duration | Total slack | Free slack | Constraint | Deadline | Resources | Work | Actual work |
| --- | --- | --- | --- | --- | --- | --- | --- | --- | --- | --- | --- | --- | --- | --- | --- | --- | --- | --- | --- |
| 1 | 1 | Début | milestone | 0d | 2003-05-12 | 2003-05-12 |  |  |  | 2003-05-12 | 2003-05-12 | 0d | 117d | 0d | start no earlier than 2003-05-12 |  |  |  |  |
| 2 | 2 | **Livrable 1 Vérification de données** |  | 9d | 2003-05-12 A | 2003-05-22 | 1 | 99% | 0d | 2003-05-12 | 2003-05-22 | 9d | 108d |  |  |  |  |  |  |
| 3 | 2.1 | Definir fichiers à importer |  | 2d | 2003-05-12 A | 2003-05-13 A |  | 100% |  | 2003-05-12 | 2003-05-13 | 2d |  |  |  | 2003-05-28 |  |  |  |
| 4 | 2.2 | Importer données |  | 2d | 2003-05-14 A | 2003-05-15 A | 3 | 100% |  | 2003-05-14 | 2003-05-15 | 2d |  |  |  |  |  |  |  |
| 5 | 2.3 | Vérification fichier |  | 5d | 2003-05-16 A | 2003-05-22 A | 4 | 100% |  | 2003-05-16 | 2003-05-22 | 5d |  |  | start no earlier than 2003-05-22 |  |  |  |  |
| 6 | 2.4 | Fin Livrable 1 | milestone | 0d | 2003-05-22 | 2003-05-22 | 5 |  |  | 2003-05-22 | 2003-05-22 | 0d | 108d |  |  |  |  |  |  |
| 7 | 3 | **Librable 2 Menu Fichier** |  | 26d? | 2003-05-23 A | 2003-06-27 | 5 | 88% | 3.21d? | 2003-05-23 | 2003-06-17 | 17.5d? | 82d |  |  |  |  | 376h | 329.6h |
| 8 | 3.1 | Menu Nouveau Exam |  | 1d? | 2003-05-23 A | 2003-05-23 A |  | 100% |  | 2003-05-23 | 2003-05-26 | 2d? |  |  |  |  | Ruben | 8h | 8h |
| 9 | 3.2 | Menu Nouveau Cycle |  | 1d | 2003-05-26 A | 2003-05-26 A |  | 100% |  | 2003-05-27 | 2003-05-28 | 2d? |  |  |  |  | Ruben | 8h | 8h |
| 10 | 3.3 | Grille Horaire TTPanel |  | 2d? | 2003-05-29 A | 2003-05-30 |  | 60% | 0.8d? | 2003-05-29 | 2003-05-30 | 2d? | 102d |  |  |  | Ruben | 16h | 9.6h |
| 11 | 3.4 | Menu Open |  | 1d | 2003-05-27 A | 2003-05-27 A |  | 100% |  | 2003-06-02 | 2003-06-03 | 2d? |  |  |  |  | Ruben | 8h | 8h |
| 12 | 3.5 | Actions Open |  | 1d | 2003-06-02 A | 2003-06-02 A | 11 | 100% |  | 2003-06-04 | 2003-06-05 | 2d? |  |  |  |  | Ruben | 8h | 8h |
| 13 | 3.6 | Menu Fermer + Close Win |  | 1d | 2003-06-04 A | 2003-06-04 A |  | 100% |  | 2003-06-06 | 2003-06-09 | 2d? |  |  |  |  | Ruben | 8h | 8h |
| 14 | 3.7 | Menu sauvegarde |  | 1d | 2003-05-23 A | 2003-05-23 A |  | 100% |  | 2003-05-23 | 2003-05-26 | 2d? |  |  |  |  | Alex | 8h | 8h |
| 15 | 3.8 | Menu sauvegarde sous |  | 1d | 2003-05-27 A | 2003-05-27 A | 14 | 100% |  | 2003-05-27 | 2003-05-28 | 2d? |  |  |  |  | Alex | 8h | 8h |
| 16 | 3.9 | Action sauvegarde |  | 1d? | 2003-05-28 A | 2003-05-28 A | 15 | 100% |  | 2003-05-29 | 2003-05-30 | 2d? |  |  |  |  | Alex | 8h | 8h |
| 17 | 3.10 | Lire/Écrire XML |  | 5d? | 2003-05-23 A | 2003-05-29 A |  | 100% |  | 2003-05-23 | 2003-05-29 | 5d? |  |  |  |  | Yannick | 40h | 40h |
| 18 | 3.11 | Lire/Écrire Grille horaire |  | 3d | 2003-05-30 A | 2003-06-03 A | 17 | 100% |  | 2003-05-30 | 2003-06-03 | 3d |  |  |  |  | Yannick | 24h | 24h |
| 19 | 3.12 | Construction TTStructure |  | 5d | 2003-06-04 A | 2003-06-10 A | 18 | 100% |  | 2003-06-04 | 2003-06-05 | 2d? |  |  |  |  | Yannick | 40h | 40h |
| 20 | 3.13 | Test de TTStructure |  | 4d? | 2003-06-19 A | 2003-06-27 A | 19 | 100% |  |  |  |  |  |  |  |  | Yannick | 32h | 32h |
| 21 | 3.14 | Menu Nouvelle grille horaire |  | 1d | 2003-06-05 A | 2003-06-05 A |  | 100% |  | 2003-06-10 | 2003-06-11 | 2d |  |  |  |  | Ruben | 8h | 8h |
| 22 | 3.15 | Modif DDocument |  | 1d? | 2003-05-26 | 2003-05-26 |  |  |  |  |  |  | 106d |  |  |  | Alex | 8h |  |
| 23 | 3.16 | Actions Nouvelle grille |  | 5d | 2003-06-11 A | 2003-06-17 A |  | 100% |  | 2003-06-06 | 2003-06-11 | 4d |  |  |  |  | Yannick | 40h | 40h |
| 24 | 3.17 | Menu Modifier grille horaire |  | 2d | 2003-06-06 | 2003-06-09 |  |  |  | 2003-06-12 | 2003-06-13 | 2d | 66d | 0d |  |  | Ruben | 16h |  |
| 25 | 3.18 | Save grille horaire |  | 2d | 2003-06-10 | 2003-06-11 | 24 |  |  | 2003-06-16 | 2003-06-17 | 1.5d | 67d | 12d |  |  | Ruben | 16h |  |
| 26 | 3.19 | Tool bar modif grille |  | 3d? | 2003-05-29 A | 2003-06-02 A | 22 | 100% |  | 2003-06-02 | 2003-06-06 | 5d? |  |  |  |  | Alex | 24h | 24h |
| 27 | 3.20 | Actions Toolbar |  | 6d? | 2003-06-03 A | 2003-06-10 A | 26 | 100% |  | 2003-06-09 | 2003-06-13 | 5d? |  |  |  |  | Alex | 48h | 48h |
| 28 | 3.21 | Fin Livrable 2 | milestone | 0d | 2003-06-27 | 2003-06-27 | 25, 23, 27, 20 |  |  | 2003-06-17 | 2003-06-17 | 0d | 55d | 0d |  |  |  |  |  |

| ID | WBS | Task | Duration | Start | Finish | Predecessors | Baseline start | Baseline finish | Baseline duration | Total slack | Free slack | Resources | Work |
| --- | --- | --- | --- | --- | --- | --- | --- | --- | --- | --- | --- | --- | --- |
| 29 | 4 | **Livrable 3 Changements en mémoire** | 39d? | 2003-06-30 | 2003-08-21 | 28 | 2003-06-17 | 2003-07-25 | 28d | 43d |  |  | 416h |
| 30 | 4.1 | **SetOfEvents** | 4d? | 2003-07-07 | 2003-07-10 |  |  |  |  | 73d |  |  | 24h |
| 31 | 4.1.1 | Construction | 2d? | 2003-07-07 | 2003-07-08 |  |  |  |  | 74d | 1d | Yannick | 16h |
| 32 | 4.1.2 | Test | 1d? | 2003-07-10 | 2003-07-10 | 31 |  |  |  | 73d |  | Yannick | 8h |
| 33 | 4.2 | **Matrice conflits étudiants** | 4d? | 2003-07-14 | 2003-07-17 |  |  |  |  | 68d |  |  | 24h |
| 34 | 4.2.1 | Construction | 2d? | 2003-07-14 | 2003-07-15 |  |  |  |  | 69d | 1d | Yannick | 16h |
| 35 | 4.2.2 | Test | 1d? | 2003-07-17 | 2003-07-17 | 34 |  |  |  | 68d |  | Yannick | 8h |
| 36 | 4.3 | **Conflits étudiants** | 2d? | 2003-07-18 | 2003-07-21 |  |  |  |  | 66d |  |  | 16h |
| 37 | 4.3.1 | Construction | 1d? | 2003-07-18 | 2003-07-18 |  |  |  |  | 66d | 0d | Yannick | 8h |
| 38 | 4.3.2 | Test | 1d? | 2003-07-21 | 2003-07-21 | 37 |  |  |  | 66d |  | Yannick | 8h |
| 39 | 4.4 | **Conflits locaux** | 2d? | 2003-07-21 | 2003-07-22 |  |  |  |  | 65d |  |  | 16h |
| 40 | 4.4.1 | Construction | 1d? | 2003-07-21 | 2003-07-21 |  |  |  |  | 65d | 0d | Yannick | 8h |
| 41 | 4.4.2 | Test | 1d? | 2003-07-22 | 2003-07-22 | 40 |  |  |  | 65d |  | Yannick | 8h |
| 42 | 4.5 | **Conflits enseignants** | 2d? | 2003-07-25 | 2003-07-28 |  |  |  |  | 61d |  |  | 16h |
| 43 | 4.5.1 | Construction | 1d? | 2003-07-25 | 2003-07-25 |  |  |  |  | 61d | 0d | Yannick | 8h |
| 44 | 4.5.2 | Test | 1d? | 2003-07-28 | 2003-07-28 | 43 |  |  |  | 61d |  | Yannick | 8h |
| 45 | 4.6 | **Affectation événement** | 2d? | 2003-07-28 | 2003-07-29 |  |  |  |  | 60d |  |  | 16h |
| 46 | 4.6.1 | Construction | 1d? | 2003-07-28 | 2003-07-28 |  |  |  |  | 60d | 0d | Yannick | 8h |
| 47 | 4.6.2 | Test | 1d? | 2003-07-29 | 2003-07-29 | 46 |  |  |  | 60d |  | Yannick | 8h |
| 48 | 4.7 | **Matrice de groupes** | 2d? | 2003-08-01 | 2003-08-04 |  |  |  |  | 56d |  |  | 16h |
| 49 | 4.7.1 | Construction | 1d? | 2003-08-01 | 2003-08-01 |  |  |  |  | 56d | 0d | Yannick | 8h |
| 50 | 4.7.2 | Test | 1d? | 2003-08-04 | 2003-08-04 | 49 |  |  |  | 56d |  | Yannick | 8h |
| 51 | 4.8 | **Conflits étudiants** | 2d? | 2003-08-04 | 2003-08-05 |  |  |  |  | 55d |  |  | 16h |
| 52 | 4.8.1 | Construction | 1d? | 2003-08-04 | 2003-08-04 |  |  |  |  | 55d | 0d | Yannick | 8h |
| 53 | 4.8.2 | Test | 1d? | 2003-08-05 | 2003-08-05 | 52 |  |  |  | 55d |  | Yannick | 8h |

| ID | WBS | Task | Duration | Start | Finish | Predecessors | Baseline start | Baseline finish | Baseline duration | Total slack | Free slack | Constraint | Resources | Work |
| --- | --- | --- | --- | --- | --- | --- | --- | --- | --- | --- | --- | --- | --- | --- |
| 54 | 4.9 | **Balancement de groupes** | 2d? | 2003-08-08 | 2003-08-11 |  |  |  |  | 51d |  |  |  | 16h |
| 55 | 4.9.1 | Construction | 1d? | 2003-08-08 | 2003-08-08 |  |  |  |  | 51d | 0d |  | Yannick | 8h |
| 56 | 4.9.2 | Test | 1d? | 2003-08-11 | 2003-08-11 | 55 |  |  |  | 51d |  |  | Yannick | 8h |
| 57 | 4.10 | **Affectation initiale** | 2d? | 2003-08-11 | 2003-08-12 |  |  |  |  | 50d |  |  |  | 16h |
| 58 | 4.10.1 | Construction | 1d? | 2003-08-11 | 2003-08-11 |  |  |  |  | 50d | 0d |  | Yannick | 8h |
| 59 | 4.10.2 | Test | 1d? | 2003-08-12 | 2003-08-12 | 58 |  |  |  | 50d |  |  | Yannick | 8h |
| 60 | 4.11 | **Amélioration manuelle** | 2d? | 2003-08-15 | 2003-08-18 |  |  |  |  | 46d |  |  |  | 16h |
| 61 | 4.11.1 | Construction | 1d? | 2003-08-15 | 2003-08-15 |  |  |  |  | 46d | 0d |  | Yannick | 8h |
| 62 | 4.11.2 | Test | 1d? | 2003-08-18 | 2003-08-18 | 61 |  |  |  | 46d |  |  | Yannick | 8h |
| 63 | 4.12 | Menu activités | 2d | 2003-08-14 | 2003-08-15 | 76 | 2003-06-17 | 2003-06-19 | 2d | 47d |  | start no earlier than 2003-07-15 | Alex | 16h |
| 64 | 4.13 | **Actions Activités** | 7d | 2003-06-30 | 2003-07-08 | 63 | 2003-06-19 | 2003-06-25 | 4d | 75d |  |  |  | 32h |
| 65 | 4.13.1 | Codage | 2d | 2003-06-30 | 2003-07-01 |  | 2003-06-19 | 2003-06-23 | 2d | 80d |  |  | Alex | 16h |
| 66 | 4.13.2 | Test | 2d | 2003-07-07 | 2003-07-08 |  | 2003-06-23 | 2003-06-25 | 2d | 75d |  |  | Alex | 16h |
| 67 | 4.14 | Menu blocs | 2d | 2003-07-11 | 2003-07-14 |  | 2003-06-25 | 2003-06-27 | 2d | 69d | 0d |  | Alex | 16h |
| 68 | 4.15 | **Actions blocs** | 6d | 2003-07-15 | 2003-07-22 | 67 | 2003-06-27 | 2003-07-03 | 4d | 65d |  |  |  | 32h |
| 69 | 4.15.1 | Codage | 2d | 2003-07-15 | 2003-07-17 |  | 2003-06-27 | 2003-07-01 | 2d | 68d |  |  | Alex | 16h |
| 70 | 4.15.2 | Test | 2d | 2003-07-21 | 2003-07-22 |  | 2003-07-01 | 2003-07-03 | 2d | 65d |  |  | Alex | 16h |
| 71 | 4.16 | Menu enseignants | 2d | 2003-07-21 | 2003-07-22 |  | 2003-07-03 | 2003-07-07 | 2d | 63d | 1d |  | Alex | 16h |
| 72 | 4.17 | **Actions enseignants** | 4d | 2003-07-24 | 2003-07-29 | 71 | 2003-07-07 | 2003-07-11 | 4d | 60d |  |  |  | 32h |
| 73 | 4.17.1 | Codage | 2d | 2003-07-24 | 2003-07-25 |  | 2003-07-07 | 2003-07-09 | 2d | 62d |  |  | Alex | 16h |
| 74 | 4.17.2 | Test | 2d | 2003-07-28 | 2003-07-29 |  | 2003-07-09 | 2003-07-11 | 2d | 60d |  |  | Alex | 16h |
| 75 | 4.18 | Menu groupe | 2d | 2003-08-01 | 2003-08-04 |  | 2003-07-11 | 2003-07-15 | 2d | 51d | 0d |  | Alex | 16h |
| 76 | 4.19 | **Actions groupes** | 6d | 2003-08-05 | 2003-08-12 | 75 | 2003-07-15 | 2003-07-21 | 4d | 48d | 1d |  |  | 32h |
| 77 | 4.19.1 | Codage | 2d | 2003-08-05 | 2003-08-07 |  | 2003-07-15 | 2003-07-17 | 2d | 51d |  |  | Alex | 16h |
| 78 | 4.19.2 | Test | 2d | 2003-08-11 | 2003-08-12 |  | 2003-07-17 | 2003-07-21 | 2d | 48d |  |  | Alex | 16h |

| ID | WBS | Task | Type | Duration | Start | Finish | Predecessors | Baseline start | Baseline finish | Baseline duration | Total slack | Free slack | Resources | Work |
| --- | --- | --- | --- | --- | --- | --- | --- | --- | --- | --- | --- | --- | --- | --- |
| 79 | 4.20 | **Grille horaire Adaptée** |  | 5d | 2003-08-15 | 2003-08-21 |  | 2003-07-21 | 2003-07-25 | 4d | 21d |  |  | 32h |
| 80 | 4.20.1 | Codage |  | 2d | 2003-08-15 | 2003-08-18 |  | 2003-07-21 | 2003-07-23 | 2d | 21d | 0d | Alex | 16h |
| 81 | 4.20.2 | Test |  | 2d | 2003-08-19 | 2003-08-21 | 80 | 2003-07-23 | 2003-07-25 | 2d | 21d | 0d | Alex | 16h |
| 82 | 4.21 | Fin Livrable 3 | milestone | 0d | 2003-08-21 | 2003-08-21 | 81 | 2003-07-25 | 2003-07-25 | 0d | 21d | 0d |  |  |
| 83 | 5 | **Livrable 4 Construction Horaire** |  | 22d? | 2003-08-22 | 2003-09-22 | 82 | 2003-07-25 | 2003-08-20 | 18d? | 21d |  |  | 272h |
| 84 | 5.1 | **Affectation initiale 2** |  | 7d? | 2003-08-22 | 2003-09-01 |  | 2003-07-25 | 2003-08-04 | 6d? | 34d |  |  | 48h |
| 85 | 5.1.1 | Codage actions Affectation |  | 2d? | 2003-08-22 | 2003-08-25 |  | 2003-07-25 | 2003-07-29 | 2d? | 41d |  | Yannick | 16h |
| 86 | 5.1.2 | Test |  | 2d? | 2003-08-25 | 2003-08-26 |  | 2003-07-29 | 2003-07-31 | 2d? | 40d |  | Yannick | 16h |
| 87 | 5.1.3 | Calcul de conflits |  | 2d? | 2003-08-29 | 2003-09-01 |  | 2003-07-31 | 2003-08-04 | 2d? | 29d | 0d | Yannick | 16h |
| 88 | 5.2 | **Conflits enseignants** |  | 5d? | 2003-09-02 | 2003-09-08 | 87 | 2003-08-04 | 2003-08-08 | 4d? | 29d |  |  | 32h |
| 89 | 5.2.1 | Actions associées conflits enseigents |  | 2d? | 2003-09-02 | 2003-09-04 |  | 2003-08-04 | 2003-08-06 | 2d? | 28d | 0d | Yannick | 16h |
| 90 | 5.2.2 | Test |  | 2d? | 2003-09-05 | 2003-09-08 | 89 | 2003-08-06 | 2003-08-08 | 2d? | 29d | 0d | Yannick | 16h |
| 91 | 5.3 | **Conflits étudiants** |  | 6d? | 2003-09-08 | 2003-09-15 |  | 2003-08-08 | 2003-08-14 | 4d? | 26d |  |  | 32h |
| 92 | 5.3.1 | Actions associées conflits étudiants |  | 2d? | 2003-09-08 | 2003-09-09 |  | 2003-08-08 | 2003-08-12 | 2d? | 30d |  | Yannick | 16h |
| 93 | 5.3.2 | Test |  | 2d? | 2003-09-12 | 2003-09-15 |  | 2003-08-12 | 2003-08-14 | 2d? | 26d |  | Yannick | 16h |
| 94 | 5.4 | **Conflits locaux** |  | 6d? | 2003-09-15 | 2003-09-22 |  | 2003-08-14 | 2003-08-20 | 4d? | 21d |  |  | 32h |
| 95 | 5.4.1 | Actions associées conflits locaux |  | 2d? | 2003-09-15 | 2003-09-16 |  | 2003-08-14 | 2003-08-18 | 2d? | 25d |  | Yannick | 16h |
| 96 | 5.4.2 | Test |  | 2d? | 2003-09-19 | 2003-09-22 |  | 2003-08-18 | 2003-08-20 | 2d? | 21d |  | Yannick | 16h |
| 97 | 5.5 | **Actions associées conflits et interface** |  | 6d? | 2003-09-09 | 2003-09-16 | 90 | 2003-08-08 | 2003-08-14 | 4d? | 25d |  |  | 32h |
| 98 | 5.5.1 | Codage |  | 2d? | 2003-09-09 | 2003-09-11 |  | 2003-08-08 | 2003-08-12 | 2d? | 28d |  | Alex | 16h |
| 99 | 5.5.2 | Test |  | 2d? | 2003-09-15 | 2003-09-16 |  | 2003-08-12 | 2003-08-14 | 2d? | 25d |  | Alex | 16h |
| 100 | 5.6 | Dialoges amélioration manuelle |  | 2d? | 2003-08-22 | 2003-08-25 |  | 2003-07-25 | 2003-07-29 | 2d? | 41d |  | Alex | 16h |
| 101 | 5.7 | **Actions amélioration manuelle** |  | 6d? | 2003-08-25 | 2003-09-01 |  | 2003-07-29 | 2003-08-04 | 4d? | 36d |  |  | 32h |
| 102 | 5.7.1 | Codage |  | 2d? | 2003-08-25 | 2003-08-26 |  | 2003-07-29 | 2003-07-31 | 2d? | 40d |  | Alex | 16h |
| 103 | 5.7.2 | Test |  | 2d? | 2003-08-29 | 2003-09-01 |  | 2003-07-31 | 2003-08-04 | 2d? | 36d |  | Alex | 16h |
| 104 | 5.8 | Exporter données |  | 2d? | 2003-09-01 | 2003-09-02 |  | 2003-08-04 | 2003-08-06 | 2d? | 35d |  | Alex | 16h |

| ID | WBS | Task | Type | Duration | Start | Finish | Predecessors | Baseline start | Baseline finish | Baseline duration | Total slack | Free slack | Resources | Work |
| --- | --- | --- | --- | --- | --- | --- | --- | --- | --- | --- | --- | --- | --- | --- |
| 105 | 5.9 | **Actions exporter données** |  | 8d? | 2003-09-05 | 2003-09-16 |  | 2003-08-06 | 2003-08-18 | 8d? | 11d |  |  | 32h |
| 106 | 5.9.1 | Codage |  | 2d? | 2003-09-05 | 2003-09-08 |  | 2003-08-06 | 2003-08-08 | 2d? | 31d |  | Alex | 16h |
| 107 | 5.9.2 | Test |  | 2d? | 2003-09-15 | 2003-09-16 |  | 2003-08-14 | 2003-08-18 | 2d? | 5d | 0d | Alex | 16h |
| 108 | 5.10 | Fin Livrable 4 | milestone | 0d | 2003-09-16 | 2003-09-16 | 107 | 2003-08-18 | 2003-08-18 | 0d | 6d | 1d |  |  |
| 109 | 6 | **Livrable 5 Optimisation + Rapports** |  | 17d? | 2003-09-18 | 2003-10-10 | 108 | 2003-08-18 | 2003-09-05 | 14d? | 5d |  |  | 160h |
| 110 | 6.1 | Optimisation |  | 2d? | 2003-09-22 | 2003-09-23 |  | 2003-08-20 | 2003-08-22 | 2d? | 16d | 1d | Yannick | 16h |
| 111 | 6.2 | Codage |  | 2d? | 2003-09-25 | 2003-09-26 | 110 | 2003-08-22 | 2003-08-26 | 2d? | 17d |  | Yannick | 16h |
| 112 | 6.3 | Test |  | 2d? | 2003-09-29 | 2003-09-30 | 110 | 2003-08-26 | 2003-08-28 | 2d? | 15d |  | Yannick | 16h |
| 113 | 6.4 | Dialog de rapports |  | 2d? | 2003-09-18 | 2003-09-19 |  | 2003-08-18 | 2003-08-20 | 2d? | 5d | 0d | Alex | 16h |
| 114 | 6.5 | Rapport complet |  | 2d? | 2003-09-22 | 2003-09-23 | 113 | 2003-08-20 | 2003-08-22 | 2d? | 5d | 1d | Alex | 16h |
| 115 | 6.6 | Rapport conflits |  | 2d? | 2003-09-25 | 2003-09-26 | 114 | 2003-08-22 | 2003-08-26 | 2d? | 5d | 0d | Alex | 16h |
| 116 | 6.7 | Rapport importation |  | 2d? | 2003-09-29 | 2003-09-30 | 115 | 2003-08-26 | 2003-08-28 | 2d? | 5d | 1d | Alex | 16h |
| 117 | 6.8 | Rapport liste d'activités |  | 2d? | 2003-10-02 | 2003-10-03 | 116 | 2003-08-28 | 2003-09-01 | 2d? | 5d | 0d | Alex | 16h |
| 118 | 6.9 | Rapport groupes |  | 2d? | 2003-10-06 | 2003-10-07 | 117 | 2003-09-01 | 2003-09-03 | 2d? | 5d | 1d | Alex | 16h |
| 119 | 6.10 | Rapport complet & ranger |  | 2d? | 2003-10-09 | 2003-10-10 | 118 | 2003-09-03 | 2003-09-05 | 2d? | 5d | 0d | Alex | 16h |
| 120 | 6.11 | Fin Livrable 5 | milestone | 0d | 2003-10-10 | 2003-10-10 | 119 | 2003-09-05 | 2003-09-05 | 0d | 5d | 0d | Alex |  |
| 121 | 7 | **Livrable 6 Maintenance** |  | 7d? | 2003-10-13 | 2003-10-21 | 120 | 2003-09-05 | 2003-09-15 | 6d? | 0d |  |  | 48h |
| 122 | 7.1 | Compéter les menus |  | 2d? | 2003-10-13 | 2003-10-14 |  | 2003-09-05 | 2003-09-09 | 2d? | 5d |  | Alex | 16h |
| 123 | 7.2 | Compléter lesrapports |  | 2d? | 2003-10-17 | 2003-10-20 |  | 2003-09-09 | 2003-09-11 | 2d? | 1d |  | Alex | 16h |
| 124 | 7.3 | Ajout des fonctionnalitées |  | 2d? | 2003-10-20 | 2003-10-21 |  | 2003-09-11 | 2003-09-15 | 2d? | 0d |  | Alex | 16h |
